# DC module

How a schedule from a web Gantt chart changed from version to version. A marks actual dates.

## Version 1 (saved 2026-08-21)

| ID | WBS | Task | Duration | Start | Finish | Complete |
| --- | --- | --- | --- | --- | --- | --- |
| 2 | 1 | **0. SDV rework** | 20d | 2026-08-19 | 2026-09-07 |  |
| 3 |  | Plan A: 增加锡重新回流 | 1d | 2026-08-19 | 2026-08-19 |  |
| 4 |  | Plan B：小锡炉返修 | 1d | 2026-08-19 | 2026-08-19 |  |
| 5 | 1.3 | **Plan C: 波峰焊返修** | 15d | 2026-08-24 | 2026-09-07 |  |
| 6 |  | 波峰焊治具到达 | 14d | 2026-08-24 | 2026-09-06 |  |
| 7 |  | 验证 | 1d | 2026-09-06 | 2026-09-06 |  |
| 8 |  | 出货 | 2d | 2026-09-06 | 2026-09-07 |  |
| 9 | 2 | **1. SDV-SIT DC module soldering study** | 81d | 2026-08-25 | 2026-11-13 |  |
| 10 | 2.1 | **Plan A: 波峰焊验证** | 50d | 2026-09-03 | 2026-10-22 |  |
| 11 |  | A.1 锡条、无卤助焊剂调拨 | 50d | 2026-09-03 | 2026-10-22 |  |
| 12 |  | A.1 波峰焊治具 | 15d | 2026-09-15 | 2026-09-29 |  |
| 13 |  | A.2 PCB元器件避让 | 40d | 2026-09-06 | 2026-10-15 |  |
| 14 |  | A 验证 | 1d | 2026-10-22 | 2026-10-22 |  |
| 15 | 2.2 | **Plan B: 回流焊验证** | 41d | 2026-08-25 | 2026-10-04 |  |
| 16 |  | B.1 PCB/电解电容/DCmodule物资调拨 | 20d | 2026-08-25 | 2026-09-13 |  |
| 17 |  | B.1 扩大钢网开孔 | 15d | 2026-08-25 | 2026-09-08 |  |
| 18 |  | B.1 治具增加合成石挡块（3mm&5mm) | 20d | 2026-08-25 | 2026-09-13 |  |
| 19 |  | B.1 线体调配 | 1d | 2026-09-10 | 2026-09-10 |  |
| 20 |  | B.1 验证 | 1d | 2026-09-11 | 2026-09-11 |  |
| 21 |  | B.2 建议扩大PIP孔径 | 40d | 2026-08-25 | 2026-10-03 |  |
| 22 |  | B.2 建议缩短Pin长度 | 40d | 2026-08-25 | 2026-10-03 |  |
| 23 |  | B.2 建议Pin镀金 | 40d | 2026-08-25 | 2026-10-03 |  |
| 24 |  | B.2 建议减少大铜面 | 40d | 2026-08-25 | 2026-10-03 |  |
| 25 |  | B.2 线体调配 | 1d | 2026-10-04 | 2026-10-04 |  |
| 26 |  | B.2验证 | 1d | 2026-10-04 | 2026-10-04 |  |
| 27 |  | SIT Build | 1d | 2026-11-13 | 2026-11-13 | 100% |

## Version 2 (saved 2026-08-25)

Last finish stays 2026-11-13.

Added:

| ID | Task | Duration | Start | Finish |
| --- | --- | --- | --- | --- |
| 14 | A.2 建议减少PTH连接的铜面层数 | 40d | 2026-09-06 | 2026-10-15 |
| 23 | B.2 建议减少PTH连接的铜面层数 | 40d | 2026-09-06 | 2026-10-15 |

Removed: 21 B.2 建议扩大PIP孔径; 23 B.2 建议Pin镀金; 24 B.2 建议减少大铜面

Changed:

| ID | Task | Finish | Duration |
| --- | --- | --- | --- |
| 16 | **Plan B: 回流焊验证** | 2026-10-04 → 2026-10-15 (+11d) | 41d → 52d |

## Version 3 (saved 2026-08-26)

Last finish stays 2026-11-13. Complete tasks 1 → 4.

Added:

| ID | Task | Duration | Start | Finish |
| --- | --- | --- | --- | --- |
| 7 | 验证&返修 | 3d | 2026-08-25 | 2026-08-27 |
| 11 | A.1 PCB/电解电容/DCmodule物资调拨 | 1d | 2026-09-15 | 2026-09-15 |

Removed: 7 验证

Changed:

| ID | Task | Start | Finish | Duration | Complete |
| --- | --- | --- | --- | --- | --- |
| 2 | **0. SDV rework** |  |  |  | 0% → 41% |
| 3 | Plan A: 增加锡重新回流 |  |  |  | 0% → 100% |
| 4 | Plan B：小锡炉返修 |  |  |  | 0% → 100% |
| 5 | **Plan C: 波峰焊返修** | 2026-08-24 → 2026-08-25 (+1d) |  | 15d → 14d | 0% → 22% |
| 6 | 波峰焊治具到达 | 2026-08-24 → 2026-08-25 (+1d) | 2026-09-06 → 2026-08-25 (-12d) | 14d → 1d | 0% → 100% |
| 9 | **1. SDV-SIT DC module soldering study** |  |  |  | 0% → 9% |
| 10 | **Plan A: 波峰焊验证** |  | 2026-10-22 → 2026-10-23 (+1d) | 50d → 51d |  |
| 16 | A 验证 |  | 2026-10-22 → 2026-10-23 (+1d) | 1d → 2d |  |
| 17 | **Plan B: 回流焊验证** |  |  |  | 0% → 17% |
| 18 | B.1 PCB/电解电容/DCmodule物资调拨 |  |  |  | 0% → 20% |
| 22 | B.1 验证 |  | 2026-09-11 → 2026-09-12 (+1d) | 1d → 2d |  |
| 24 | B.2 建议缩短Pin长度 |  |  |  | 0% → 50% |

## Version 4 (saved 2026-08-27)

Last finish stays 2026-11-13. Complete tasks 4 → 6.

Added:

| ID | Task | Duration | Start | Finish |
| --- | --- | --- | --- | --- |
| 6 | C.1 波峰焊治具到达 | 1d | 2026-08-25 | 2026-08-25 |
| 7 | C.2 验证 | 3d | 2026-08-25 | 2026-08-27 |
| 8 | C.3 返修 | 3d | 2026-08-25 | 2026-08-27 |
| 9 | C.4 出货 | 14d | 2026-08-25 | 2026-09-07 |

Removed: 6 波峰焊治具到达; 7 验证&返修; 8 出货

Changed:

| ID | Task | Complete |
| --- | --- | --- |
| 2 | **0. SDV rework** | 41% → 51% |
| 5 | **Plan C: 波峰焊返修** | 22% → 47% |

## Version 5 (saved 2026-08-31)

Last finish stays 2026-11-13.

Added:

| ID | Task | Duration | Start | Finish |
| --- | --- | --- | --- | --- |
| 11 | 1.0 Origial Gerber PCB寄送 | 22d | 2026-08-25 | 2026-09-15 |
| 12 | **1.1 ReGerber 评估** | 51d | 2026-08-25 | 2026-10-14 |
| 13 | 1.1.1 建议减少PTH连接的铜面层数 | 3d | 2026-08-25 | 2026-08-27 |
| 14 | 1.1.2 Placement底面元器件避让 | 10d | 2026-08-25 | 2026-09-03 |
| 15 | 1.1.3 G.O | 3d | 2026-09-02 | 2026-09-04 |
| 16 | 1.1.4 PCB生产 | 27d | 2026-09-04 | 2026-09-30 |
| 17 | 1.14 PCB运送 | 14d | 2026-10-01 | 2026-10-14 |
| 18 | **1.2 验证器件调拨** | 28d | 2026-09-02 | 2026-09-29 |
| 19 | 1.2.1 DC module调拨 | 5d | 2026-09-02 | 2026-09-06 |
| 20 | 1.2.2 电解电容调拨 | 5d | 2026-09-02 | 2026-09-06 |
| 21 | 1.2.3 器件运送 | 15d | 2026-09-15 | 2026-09-29 |
| 24 | A.2 波峰焊治具 | 15d | 2026-09-15 | 2026-09-29 |
| 25 | A.3 验证（原Gerber) | 2d | 2026-09-15 | 2026-09-16 |
| 26 | A.4 验证（新Gerber) | 2d | 2026-10-23 | 2026-10-24 |
| 29 | B.2 治具增加合成石挡块（3mm&5mm) | 30d | 2026-09-03 | 2026-10-02 |
| 30 | B.3 验证（原Gerber) | 1d | 2026-10-02 | 2026-10-02 |
| 31 | B.4 验证 (新Gerber) | 1d | 2026-10-17 | 2026-10-17 |

Removed: 12 A.1 PCB/电解电容/DCmodule物资调拨; 14 A.1 波峰焊治具; 15 A.2 PCB元器件避让; 16 A.2 建议减少PTH连接的铜面层数; 17 A 验证; 19 B.1 PCB/电解电容/DCmodule物资调拨; 21 B.1 治具增加合成石挡块（3mm&5mm); 22 B.1 线体调配; 23 B.1 验证; 24 B.2 建议减少PTH连接的铜面层数; 25 B.2 建议缩短Pin长度; 26 B.2 线体调配; 27 B.2验证

Changed:

| ID | Task | Start | Finish | Duration | Complete |
| --- | --- | --- | --- | --- | --- |
| 10 | **1. SDV-SIT DC module soldering study** |  | 2026-11-13 → 2026-10-24 (-20d) | 81d → 61d | 9% → 2% |
| 22 | **Plan A: 波峰焊验证** |  | 2026-10-23 → 2026-10-24 (+1d) | 51d → 52d |  |
| 27 | **Plan B: 回流焊验证** | 2026-08-25 → 2026-09-03 (+9d) | 2026-10-15 → 2026-10-17 (+2d) | 52d → 45d | 17% → 0% |
| 28 | B.1 扩大钢网开孔 | 2026-08-25 → 2026-09-03 (+9d) | 2026-09-08 → 2026-09-17 (+9d) |  |  |
| 32 | SIT Build |  |  |  | 100% → 0% |

## Version 6 (saved 2026-09-01)

Last finish stays 2026-11-13.

Changed:

| ID | Task | Start | Finish | Duration |
| --- | --- | --- | --- | --- |
| 10 | **1. SDV-SIT DC module soldering study** |  | 2026-10-24 → 2026-10-14 (-10d) | 61d → 51d |
| 22 | **Plan A: 波峰焊验证** | 2026-09-03 → 2026-09-01 (-2d) | 2026-10-24 → 2026-09-29 (-25d) | 52d → 29d |
| 23 | A.1 锡条、无卤助焊剂调拨 | 2026-09-03 → 2026-09-01 (-2d) | 2026-10-22 → 2026-09-25 (-27d) | 50d → 25d |
| 24 | A.2 波峰焊治具 | 2026-09-15 → 2026-09-01 (-14d) | 2026-09-29 → 2026-09-25 (-4d) | 15d → 25d |
| 26 | A.4 验证（新Gerber) | 2026-10-23 → 2026-09-28 (-25d) | 2026-10-24 → 2026-09-29 (-25d) |  |
| 27 | **Plan B: 回流焊验证** | 2026-09-03 → 2026-09-01 (-2d) | 2026-10-17 → 2026-10-13 (-4d) | 45d → 43d |
| 28 | B.1 扩大钢网开孔 | 2026-09-03 → 2026-09-01 (-2d) | 2026-09-17 → 2026-09-25 (+8d) | 15d → 25d |
| 29 | B.2 治具增加合成石挡块（3mm&5mm) | 2026-09-03 → 2026-09-01 (-2d) | 2026-10-02 → 2026-09-25 (-7d) | 30d → 25d |
| 30 | B.3 验证（原Gerber) | 2026-10-02 → 2026-09-29 (-3d) | 2026-10-02 → 2026-09-30 (-2d) | 1d → 2d |
| 31 | B.4 验证 (新Gerber) | 2026-10-17 → 2026-10-13 (-4d) | 2026-10-17 → 2026-10-13 (-4d) |  |

## Version 7 (saved 2026-09-03)

Last finish stays 2026-11-13. Complete tasks 6 → 8.

Changed:

| ID | Task | Complete |
| --- | --- | --- |
| 2 | **0. SDV rework** | 51% → 100% |
| 5 | **Plan C: 波峰焊返修** | 47% → 100% |
| 9 | C.4 出货 | 20% → 100% |
| 10 | **1. SDV-SIT DC module soldering study** | 2% → 8% |
| 12 | **1.1 ReGerber 评估** | 5% → 27% |
| 14 | 1.1.2 Placement底面元器件避让 | 0% → 100% |
| 15 | 1.1.3 G.O | 0% → 80% |

## Version 8 (saved 2026-09-17)

Last finish stays 2026-11-13. Complete tasks 8 → 7.

Changed:

| ID | Task | Start | Finish | Duration | Complete |
| --- | --- | --- | --- | --- | --- |
| 2 | **0. SDV rework** |  |  |  | 100% → 39% |
| 5 | **Plan C: 波峰焊返修** |  |  |  | 100% → 33% |
| 9 | C.4 出货 |  |  |  | 100% → 0% |
| 10 | **1. SDV-SIT DC module soldering study** |  | 2026-10-14 → 2026-10-08 (-6d) | 51d → 45d | 8% → 9% |
| 12 | **1.1 ReGerber 评估** |  | 2026-10-14 → 2026-10-06 (-8d) | 51d → 43d | 27% → 31% |
| 16 | 1.1.4 PCB生产 |  | 2026-09-30 → 2026-09-28 (-2d) | 27d → 25d |  |
| 17 | 1.14 PCB运送 | 2026-10-01 → 2026-09-28 (-3d) | 2026-10-14 → 2026-10-06 (-8d) | 14d → 9d |  |
| 27 | **Plan B: 回流焊验证** |  | 2026-10-13 → 2026-10-08 (-5d) | 43d → 38d |  |
| 31 | B.4 验证 (新Gerber) | 2026-10-13 → 2026-10-08 (-5d) | 2026-10-13 → 2026-10-08 (-5d) |  |  |

## Version 9 (saved 2026-09-24)

Last finish stays 2026-11-13.

Added:

| ID | Task | Duration | Start | Finish |
| --- | --- | --- | --- | --- |
| 30 | B.3 验证 (新Gerber) | 1d | 2026-10-08 | 2026-10-08 |

Removed: 30 B.3 验证（原Gerber); 31 B.4 验证 (新Gerber)

Changed:

| ID | Task | Start | Finish | Duration |
| --- | --- | --- | --- | --- |
| 22 | **Plan A: 波峰焊验证** |  | 2026-09-29 → 2026-10-08 (+9d) | 29d → 38d |
| 25 | A.3 验证（原Gerber) | 2026-09-15 → 2026-10-08 (+23d) | 2026-09-16 → 2026-10-08 (+22d) | 2d → 1d |
| 26 | A.4 验证（新Gerber) | 2026-09-28 → 2026-10-08 (+10d) | 2026-09-29 → 2026-10-08 (+9d) | 2d → 1d |

## Version 10 (saved 2026-09-28)

Last finish stays 2026-11-13.

Added:

| ID | Task | Duration | Start | Finish |
| --- | --- | --- | --- | --- |
| 25 | A.3 确定物料ready | 1d | 2026-09-29 | 2026-09-29 |
| 26 | A.4 验证（原+新Gerber) | 1d | 2026-10-08 | 2026-10-08 |
| 30 | B.3 确定物料ready | 1d | 2026-09-29 | 2026-09-29 |
| 31 | B.4 验证 (新Gerber) | 1d | 2026-10-08 | 2026-10-08 |

Removed: 25 A.3 验证（原Gerber); 26 A.4 验证（新Gerber); 30 B.3 验证 (新Gerber)
